# CC-01_BCR-SIG-001_20160413 - Sprints 3-4-5

How a schedule from MS Project changed from version to version. A marks actual dates.

## Version 1 (saved 2016-08-18, file CC-01_BCR-SIG-001_20160818 - Sprint 5.mpp)

Note of the change: Inicio del Sprint

| ID | WBS | Task | Duration | Start | Finish | Predecessors | Total float | Constraint |
| --- | --- | --- | --- | --- | --- | --- | --- | --- |
| 1 | 1 | **SIGANEM Bloque 02 - Fase 02 - Sprint 5** | 29.4d | 2016-08-16 08:00 | 2016-09-27 11:12 |  | 0d |  |
| 2 |  | Preparación de Propuesta y Plan de Trabajo | 1d | 2016-08-16 08:00 | 2016-08-16 17:00 |  | 0d | start no earlier than 2016-08-16 08:00 |
| 3 | 1.2 | **Análisis Requisitos del Sistema** | 0.5d | 2016-08-24 08:00 | 2016-08-24 12:00 |  | 0d |  |
| 4 |  | Validar y Evaluar Detalle los Requisitos del Sistema (RFP) | 0.5d | 2016-08-24 08:00 | 2016-08-24 12:00 | 2FS+5d | 0d |  |
| 5 | 1.3 | **Diseño** | 9.5d | 2016-08-24 13:00 | 2016-09-06 17:00 |  | 0d |  |
| 6 | 1.3.1 | **Funcional** | 6d | 2016-08-24 13:00 | 2016-09-01 12:00 |  | 0d |  |
| 7 | 1.3.1.1 | **Definición Propuesta Diseño** | 3d | 2016-08-24 13:00 | 2016-08-29 12:00 | 3 | 0d |  |
| 8 | 1.3.1.1.1 | **Diseño del requerimiento** | 3d | 2016-08-24 13:00 | 2016-08-29 12:00 |  | 0d |  |
| 9 |  | Ajuste de pantalla de relación entre Garantías Reales y Fideicomisos | 1d | 2016-08-24 13:00 | 2016-08-25 12:00 |  | 0d |  |
| 10 |  | Ajuste al proceso de cálculo del Monto Grado Gravamen | 1d | 2016-08-25 13:00 | 2016-08-26 12:00 | 9 | 0d |  |
| 11 |  | Preparación de fórmula en Excel | 0.5d | 2016-08-26 13:00 | 2016-08-26 17:00 | 10 | 0d |  |
| 12 |  | Imágenes prototipo | 0.5d | 2016-08-29 08:00 | 2016-08-29 12:00 | 11 | 0d |  |
| 13 |  | Entrega documento diseño | 0d | 2016-08-29 12:00 | 2016-08-29 12:00 | 12 | 0d |  |
| 14 |  | Revisión de propuesta con área de negocio | 1d | 2016-08-29 13:00 | 2016-08-30 12:00 | 8 | 0d |  |
| 15 |  | Ajustes Documento de diseño | 0.5d | 2016-08-30 13:00 | 2016-08-30 17:00 | 14 | 0d |  |
| 16 |  | Entrega documento diseño final | 0d | 2016-08-30 17:00 | 2016-08-30 17:00 | 15 | 0d |  |
| 17 |  | Revisión Final Area Negocio | 1d | 2016-08-31 08:00 | 2016-08-31 17:00 | 16 | 0d |  |
| 18 |  | Revisión Final TI | 1d | 2016-08-31 08:00 | 2016-08-31 17:00 | 16 | 0d |  |
| 19 |  | Ajustes por Revisión | 0.5d | 2016-09-01 08:00 | 2016-09-01 12:00 | 17, 18 | 0d |  |
| 20 |  | Aprobación Diseño Funcional | 0d | 2016-09-01 12:00 | 2016-09-01 12:00 | 19 | 0d |  |
| 21 | 1.3.2 | **Técnico** | 3.5d | 2016-09-01 13:00 | 2016-09-06 17:00 | 6 | 0d |  |
| 22 | 1.3.2.1 | **Definición Propuesta Diseño** | 2d | 2016-09-01 13:00 | 2016-09-05 12:00 |  | 0d |  |
| 23 |  | Ajuste de pantalla de relación entre Garantías Reales y Fideicomisos | 1d | 2016-09-01 13:00 | 2016-09-02 12:00 |  | 0d |  |
| 24 |  | Ajuste al proceso de cálculo del Monto Grado Gravamen | 1d | 2016-09-02 13:00 | 2016-09-05 12:00 | 23 | 0d |  |
| 25 |  | Entrega Propuesta | 0d | 2016-09-05 12:00 | 2016-09-05 12:00 | 24 | 0d |  |
| 26 |  | Revisión TI | 1d | 2016-09-05 13:00 | 2016-09-06 12:00 | 22 | 0d |  |
| 27 |  | Ajustes por revisión | 0.5d | 2016-09-06 13:00 | 2016-09-06 17:00 | 26 | 0d |  |
| 28 |  | Aprobación Apartado Técnico | 0d | 2016-09-06 17:00 | 2016-09-06 17:00 | 27 | 0d |  |
| 29 | 1.4 | **Desarrollo y pruebas internas** | 3d | 2016-09-07 08:00 | 2016-09-09 17:00 | 5 | 0d |  |
| 30 |  | Ajuste de pantalla de relación entre Garantías Reales y Fideicomisos | 1d | 2016-09-07 08:00 | 2016-09-07 17:00 |  | 0d |  |
| 31 |  | Ajuste al proceso de cálculo del Monto Grado Gravamen | 2d | 2016-09-08 08:00 | 2016-09-09 17:00 | 30 | 0d |  |
| 32 | 1.5 | **Pruebas Funcionales** | 7d | 2016-09-05 13:00 | 2016-09-14 12:00 | 22 | 1.25d |  |
| 33 |  | Generación de Scripts de Pruebas | 1d | 2016-09-05 13:00 | 2016-09-06 12:00 |  | 7.25d |  |
| 34 | 1.5.2 | **Iteración 1** | 2d | 2016-09-12 08:00 | 2016-09-13 17:00 | 29 | 1.25d |  |
| 35 |  | Aplicación de Pruebas | 1.5d | 2016-09-12 08:00 | 2016-09-13 12:00 |  | 1.25d |  |
| 36 |  | Ajustes sobre PNS | 0.5d | 2016-09-13 13:00 | 2016-09-13 17:00 | 35 | 1.25d |  |
| 37 | 1.5.3 | **Iteración 2** | 0.5d | 2016-09-14 08:00 | 2016-09-14 12:00 | 34 | 1.25d |  |
| 38 |  | Aplicación de Pruebas | 0.5d | 2016-09-14 08:00 | 2016-09-14 12:00 |  | 1.25d |  |
| 39 | 1.6 | **Pruebas de QA** | 6.75d | 2016-09-12 08:00 | 2016-09-21 15:00 | 29 | 0d |  |
| 40 |  | Generación de Scripts de Pruebas | 4d | 2016-09-12 08:00 | 2016-09-16 17:00 |  | 0d |  |
| 41 | 1.6.2 | **Iteración 1** | 3.5d | 2016-09-14 13:00 | 2016-09-20 17:00 | 32 | 0d |  |
| 42 |  | Generacion de Pase | 2h | 2016-09-14 13:00 | 2016-09-14 15:00 |  | 1.25d |  |
| 43 |  | Aplicación de Pruebas | 1.5d | 2016-09-19 08:00 | 2016-09-20 12:00 | 42, 40 | 0d |  |
| 44 |  | Ajustes sobre PNS | 0.5d | 2016-09-20 13:00 | 2016-09-20 17:00 | 43 | 0d |  |
| 45 | 1.6.3 | **Iteración 2** | 0.75d | 2016-09-21 08:00 | 2016-09-21 15:00 |  | 0d |  |
| 46 |  | Generacion de Pase | 2h | 2016-09-21 08:00 | 2016-09-21 10:00 | 41 | 0d |  |
| 47 |  | Aplicación de Pruebas | 0.5d | 2016-09-21 10:00 | 2016-09-21 15:00 | 46 | 0d |  |
| 48 | 1.7 | **Pruebas de Usuario** | 2.75d | 2016-09-21 15:00 | 2016-09-26 12:00 | 39 | 0d |  |
| 49 | 1.7.1 | **Ejecución de Pruebas** | 2.75d | 2016-09-21 15:00 | 2016-09-26 12:00 |  | 0d |  |
| 50 | 1.7.1.1 | **Iteración 1** | 2d | 2016-09-21 15:00 | 2016-09-23 15:00 |  | 0d |  |
| 51 |  | Aplicación de Pruebas | 1.5d | 2016-09-21 15:00 | 2016-09-23 10:00 |  | 0d |  |
| 52 |  | Ajustes/Pruebas | 0.5d | 2016-09-23 10:00 | 2016-09-23 15:00 | 51 | 0d |  |
| 53 | 1.7.1.2 | **Iteración 2** | 0.75d | 2016-09-23 15:00 | 2016-09-26 12:00 | 50 | 0d |  |
| 54 |  | Pase a pruebas | 2h | 2016-09-23 15:00 | 2016-09-23 17:00 |  | 0d |  |
| 55 |  | Ejecución de pruebas y documentación | 0.5d | 2016-09-26 08:00 | 2016-09-26 12:00 | 54 | 0d |  |
| 56 | 1.8 | **Documentación** | 0.5d | 2016-09-26 13:00 | 2016-09-26 17:00 | 53 | 0d |  |
| 57 |  | Manual Técnico | 0.5d | 2016-09-26 13:00 | 2016-09-26 17:00 |  | 0d |  |
| 58 | 1.9 | **Cierre** | 0.4d | 2016-09-27 08:00 | 2016-09-27 11:12 | 48, 56 | 0d |  |
| 59 |  | Preparación de Control Horas e Informe | 2h | 2016-09-27 08:00 | 2016-09-27 10:00 |  | 0d |  |
| 60 |  | Revisión de Documentos y Cierre | 1.2h | 2016-09-27 10:00 | 2016-09-27 11:12 | 59 | 0d |  |
| 62 | 1.10 | **Administración de Proyecto** | 21.12d | 2016-08-18 08:00 | 2016-09-19 09:00 |  | 0d |  |
| 63 | 1.10.1 | **Labores de gestión (atención cliente, correos, controles de cambio)** | 21.12d | 2016-08-18 08:00 | 2016-09-19 09:00 |  | 0d |  |
| 64 |  | Labores de gestión (atención cliente, correos, controles de cambio) 1 | 1h | 2016-08-18 08:00 | 2016-08-18 09:00 |  |  | start no earlier than 2016-08-18 08:00 |
| 65 |  | Labores de gestión (atención cliente, correos, controles de cambio) 2 | 1h | 2016-08-22 08:00 | 2016-08-22 09:00 |  |  | start no earlier than 2016-08-22 08:00 |
| 66 |  | Labores de gestión (atención cliente, correos, controles de cambio) 3 | 1h | 2016-08-25 08:00 | 2016-08-25 09:00 |  |  | start no earlier than 2016-08-25 08:00 |
| 67 |  | Labores de gestión (atención cliente, correos, controles de cambio) 4 | 1h | 2016-08-29 08:00 | 2016-08-29 09:00 |  |  | start no earlier than 2016-08-29 08:00 |
| 68 |  | Labores de gestión (atención cliente, correos, controles de cambio) 5 | 1h | 2016-09-01 08:00 | 2016-09-01 09:00 |  |  | start no earlier than 2016-09-01 08:00 |
| 69 |  | Labores de gestión (atención cliente, correos, controles de cambio) 6 | 1h | 2016-09-05 08:00 | 2016-09-05 09:00 |  |  | start no earlier than 2016-09-05 08:00 |
| 70 |  | Labores de gestión (atención cliente, correos, controles de cambio) 7 | 1h | 2016-09-08 08:00 | 2016-09-08 09:00 |  |  | start no earlier than 2016-09-08 08:00 |
| 71 |  | Labores de gestión (atención cliente, correos, controles de cambio) 8 | 1h | 2016-09-12 08:00 | 2016-09-12 09:00 |  |  | start no earlier than 2016-09-12 08:00 |

| ID | WBS | Task | Duration | Start | Finish | Total float | Constraint |
| --- | --- | --- | --- | --- | --- | --- | --- |
| 72 |  | Labores de gestión (atención cliente, correos, controles de cambio) 9 | 1h | 2016-09-19 08:00 | 2016-09-19 09:00 |  | start no earlier than 2016-09-19 08:00 |
| 73 | 1.10.2 | **Actualización cronograma** | 10.12d | 2016-08-31 08:00 | 2016-09-14 09:00 | 0d |  |
| 74 |  | Actualización cronograma 1 | 1h | 2016-08-31 08:00 | 2016-08-31 09:00 |  | start no earlier than 2016-08-31 08:00 |
| 75 |  | Actualización cronograma 2 | 1h | 2016-09-14 08:00 | 2016-09-14 09:00 |  | start no earlier than 2016-09-14 08:00 |
| 76 | 1.10.3 | **Preparación informe de avance** | 10.12d | 2016-08-31 08:00 | 2016-09-14 09:00 | 0d |  |
| 77 |  | Preparación informe de avance 1 | 1h | 2016-08-31 08:00 | 2016-08-31 09:00 |  | start no earlier than 2016-08-31 08:00 |
| 78 |  | Preparación informe de avance 2 | 1h | 2016-09-14 08:00 | 2016-09-14 09:00 |  | start no earlier than 2016-09-14 08:00 |
| 79 | 1.10.4 | **Actualización control de horas** | 10.12d | 2016-08-31 08:00 | 2016-09-14 09:00 | 0d |  |
| 80 |  | Actualización control de horas 1 | 1h | 2016-08-31 08:00 | 2016-08-31 09:00 |  | start no earlier than 2016-08-31 08:00 |
| 81 |  | Actualización control de horas 2 | 1h | 2016-09-14 08:00 | 2016-09-14 09:00 |  | start no earlier than 2016-09-14 08:00 |
| 82 | 1.10.5 | **Sesión Seguimiento Proyecto** | 10.12d | 2016-09-01 08:00 | 2016-09-15 09:00 | 0d |  |
| 83 |  | Sesión Seguimiento Proyecto 1 | 1h | 2016-09-01 08:00 | 2016-09-01 09:00 |  | start no earlier than 2016-09-01 08:00 |
| 84 |  | Sesión Seguimiento Proyecto 2 | 1h | 2016-09-15 08:00 | 2016-09-15 09:00 |  | start no earlier than 2016-09-15 08:00 |

## Version 2 (saved 2016-08-23, file CC-01_BCR-SIG-001_20160824 - Sprint 5.mpp)

Note of the change: Ajuste por revisión con el área usuaria y técnica

Last finish 2016-09-27 → 2016-09-19 (-8d). Complete tasks 0 → 2.

Added:

| ID | Task | Duration | Start | Finish | Predecessors |
| --- | --- | --- | --- | --- | --- |
| 12 | **Definición diseño técnico** | 1d | 2016-08-24 16:00 | 2016-08-25 16:00 | 8 |

Removed: 12 Imágenes prototipo; 21 Técnico; 22 Definición Propuesta Diseño; 25 Entrega Propuesta; 26 Revisión TI; 27 Ajustes por revisión; 28 Aprobación Apartado Técnico

Changed:

| ID | Task | Start | Finish | Duration | Complete | Total float | Predecessors | Other |
| --- | --- | --- | --- | --- | --- | --- | --- | --- |
| 1 | **SIGANEM Bloque 01 - Fase 02 - Sprint 5 RQ_MANT_2016050410580724_Backlog_3943** | 2016-08-16 08:00 A | 2016-09-27 11:12 → 2016-09-19 09:00 (-8d) | 29.4d → 23.12d | 0% → 14% |  |  | was named SIGANEM Bloque 02 - Fase 02 - Sprint 5 |
| 2 | Preparación de Propuesta y Plan de Trabajo | 2016-08-16 08:00 A | 2016-08-16 17:00 → 2016-08-18 12:00 A (+2d) | 1d → 2.5d | 0% → 100% | 0d → none |  | resources Stephanie Barahona - GMAS [50%]; Gabriela Dittel - GMAS; Ulises Rivera - GMAS [20%]; Alexander Cruz - GMAS [20%]; Arnoldo Martinelli - GMAS [80%] → Stephanie Barahona - GMAS [20%]; Gabriela Dittel - GMAS; Alexander Cruz - GMAS [20%]; Arnoldo Martinelli - GMAS |
| 3 | **Análisis Requisitos del Sistema** | 2016-08-24 08:00 → 2016-08-22 13:00 A (-2d) | 2016-08-24 12:00 → 2016-08-22 15:00 A (-2d) | 0.5d → 0.25d | 0% → 100% | 0d → none |  |  |
| 4 | Validar y Evaluar Detalle los Requisitos del Sistema (RFP) | 2016-08-24 08:00 → 2016-08-22 13:00 A (-2d) | 2016-08-24 12:00 → 2016-08-22 15:00 A (-2d) | 0.5d → 2h | 0% → 100% | 0d → none | 2FS+5d → 2FS+2d | resources Stephanie Barahona - GMAS; Ulises Rivera - GMAS; Alexander Cruz - GMAS; Arnoldo Martinelli - GMAS → Stephanie Barahona - GMAS; Alexander Cruz - GMAS; Arnoldo Martinelli - GMAS |
| 5 | **Diseño** | 2016-08-24 13:00 → 2016-08-22 15:00 A (-2d) | 2016-09-06 17:00 → 2016-08-30 11:00 (-7d) | 9.5d → 5.62d | 0% → 18% | 0d → 0.6d |  |  |
| 6 | **Funcional** | 2016-08-24 13:00 → 2016-08-22 15:00 A (-2d) | 2016-09-01 12:00 → 2016-08-30 11:00 (-2d) | 6d → 5.62d | 0% → 18% | 0d → 0.6d |  |  |
| 7 | **Definición Propuesta Diseño** | 2016-08-24 13:00 → 2016-08-22 15:00 A (-2d) | 2016-08-29 12:00 → 2016-08-25 16:00 (-4d) | 3d → 3.12d | 0% → 35% | 0d → 3.1d |  |  |
| 8 | **Diseño del requerimiento funcional** | 2016-08-24 13:00 → 2016-08-22 15:00 A (-2d) | 2016-08-29 12:00 → 2016-08-24 16:00 (-5d) | 3d → 2.12d | 0% → 52% | 0d → 0.6d |  | was named Diseño del requerimiento |
| 9 | Ajuste de pantalla de relación entre Garantías Reales y Fideicomisos | 2016-08-24 13:00 → 2016-08-22 15:00 A (-2d) | 2016-08-25 12:00 → 2016-08-23 15:00 (-2d) |  | 0% → 50% | 0d → 0.5d |  | resources Stephanie Barahona - GMAS [50%]; Equipo TI - BCR [50%] → Stephanie Barahona - GMAS [10%]; Arnoldo Martinelli - GMAS |
| 10 | Ajuste al proceso de cálculo del Monto Grado Gravamen | 2016-08-25 13:00 → 2016-08-23 15:00 A (-2d) | 2016-08-26 12:00 → 2016-08-24 15:00 (-2d) |  | 0% → 50% | 0d → 0.6d |  | resources Stephanie Barahona - GMAS [50%]; Equipo TI - BCR [50%] → Stephanie Barahona - GMAS [10%]; Arnoldo Martinelli - GMAS |
| 11 | Preparación de fórmula en Excel | 2016-08-26 13:00 → 2016-08-24 15:00 A (-2d) | 2016-08-26 17:00 → 2016-08-24 16:00 (-2d) | 0.5d → 1h | 0% → 80% | 0d → 0.6d |  | resources Stephanie Barahona - GMAS → Arnoldo Martinelli - GMAS |
| 13 | Ajuste de pantalla de relación entre Garantías Reales y Fideicomisos | 2016-09-01 13:00 → 2016-08-24 16:00 (-8d) | 2016-09-02 12:00 → 2016-08-25 11:00 (-8d) | 1d → 0.5d |  | 0d → 0.6d |  | resources Alexander Cruz - GMAS [20%]; Equipo TI - BCR; Arnoldo Martinelli - GMAS; Ulises Rivera - GMAS [20%] → Alexander Cruz - GMAS [10%]; Arnoldo Martinelli - GMAS |
| 14 | Ajuste al proceso de cálculo del Monto Grado Gravamen | 2016-09-02 13:00 → 2016-08-25 11:00 (-8d) | 2016-09-05 12:00 → 2016-08-25 16:00 (-11d) | 1d → 0.5d |  | 0d → 0.6d |  | resources Alexander Cruz - GMAS [20%]; Equipo TI - BCR; Arnoldo Martinelli - GMAS; Ulises Rivera - GMAS [20%] → Alexander Cruz - GMAS [10%]; Arnoldo Martinelli - GMAS |
| 15 | Entrega documento diseño funcional y técnico | 2016-08-29 12:00 → 2016-08-25 16:00 (-4d) | 2016-08-29 12:00 → 2016-08-25 16:00 (-4d) |  |  | 0d → 3.1d | Imágenes prototipo → 14 | was named Entrega documento diseño; resources Stephanie Barahona - GMAS → Arnoldo Martinelli - GMAS |
| 16 | Revisión de propuesta con área de negocio | 2016-08-29 13:00 → 2016-08-25 16:00 (-4d) | 2016-08-30 12:00 → 2016-08-26 16:00 (-4d) |  |  | 0d → 0.6d | 8 → 8, 12 |  |
| 17 | Ajustes documento de diseño funcional y técnico | 2016-08-30 13:00 → 2016-08-26 16:00 (-4d) | 2016-08-30 17:00 → 2016-08-29 11:00 (-1d) |  |  | 0d → 0.6d |  | was named Ajustes Documento de diseño; resources Stephanie Barahona - GMAS → Arnoldo Martinelli - GMAS |
| 18 | Entrega documento diseño final | 2016-08-30 17:00 → 2016-08-29 11:00 (-1d) | 2016-08-30 17:00 → 2016-08-29 11:00 (-1d) |  |  | 0d → 0.6d |  | resources Stephanie Barahona - GMAS → Arnoldo Martinelli - GMAS |
| 19 | Revisión Final Area Negocio | 2016-08-31 08:00 → 2016-08-29 11:00 (-2d) | 2016-08-31 17:00 → 2016-08-29 16:00 (-2d) | 1d → 0.5d |  | 0d → 0.6d |  |  |
| 20 | Revisión Final TI | 2016-08-31 08:00 → 2016-08-29 11:00 (-2d) | 2016-08-31 17:00 → 2016-08-29 16:00 (-2d) | 1d → 0.5d |  | 0d → 0.6d |  |  |
| 21 | Ajustes por Revisión | 2016-09-01 08:00 → 2016-08-29 16:00 (-3d) | 2016-09-01 12:00 → 2016-08-30 11:00 (-2d) |  |  | 0d → 0.6d |  | resources Stephanie Barahona - GMAS → Arnoldo Martinelli - GMAS |
| 22 | Aprobación Diseño Funcional y Técnico | 2016-09-01 12:00 → 2016-08-30 11:00 (-2d) | 2016-09-01 12:00 → 2016-08-30 11:00 (-2d) |  |  | 0d → 0.6d |  | was named Aprobación Diseño Funcional |
| 23 | **Desarrollo** | 2016-09-07 08:00 → 2016-08-30 11:00 (-8d) | 2016-09-09 17:00 → 2016-09-02 11:00 (-7d) |  |  | 0d → 0.6d |  | was named Desarrollo y pruebas internas |
| 24 | Ajuste de pantalla de relación entre Garantías Reales y Fideicomisos | 2016-09-07 08:00 → 2016-08-30 11:00 (-8d) | 2016-09-07 17:00 → 2016-08-31 11:00 (-7d) |  |  | 0d → 0.6d |  | resources Arnoldo Martinelli - GMAS; Alexander Cruz - GMAS [10%]; Ulises Rivera - GMAS [10%] → Arnoldo Martinelli - GMAS; Alexander Cruz - GMAS [10%] |
| 25 | Ajuste al proceso de cálculo del Monto Grado Gravamen | 2016-09-08 08:00 → 2016-08-31 11:00 (-8d) | 2016-09-09 17:00 → 2016-09-02 11:00 (-7d) |  |  | 0d → 0.6d |  | resources Arnoldo Martinelli - GMAS; Alexander Cruz - GMAS [10%]; Ulises Rivera - GMAS [10%] → Arnoldo Martinelli - GMAS; Alexander Cruz - GMAS [10%] |
| 26 | **Pruebas Funcionales** | 2016-09-05 13:00 → 2016-08-25 16:00 (-11d) | 2016-09-14 12:00 → 2016-09-06 16:00 (-8d) | 7d → 8d |  | 1.25d → 0.6d | Definición Propuesta Diseño → 12 |  |
| 27 | Generación de Scripts de Pruebas | 2016-09-05 13:00 → 2016-08-25 16:00 (-11d) | 2016-09-06 12:00 → 2016-08-26 16:00 (-11d) |  |  | 7.25d → 7.6d |  | resources Stephanie Barahona - GMAS → Arnoldo Martinelli - GMAS |
| 28 | **Iteración 1** | 2016-09-12 08:00 → 2016-09-02 11:00 (-10d) | 2016-09-13 17:00 → 2016-09-06 11:00 (-7d) |  |  | 1.25d → 0.6d |  |  |
| 29 | Aplicación de Pruebas | 2016-09-12 08:00 → 2016-09-02 11:00 (-10d) | 2016-09-13 12:00 → 2016-09-05 16:00 (-8d) |  |  | 1.25d → 0.6d |  | resources Stephanie Barahona - GMAS → Arnoldo Martinelli - GMAS |
| 30 | Ajustes sobre PNS | 2016-09-13 13:00 → 2016-09-05 16:00 (-8d) | 2016-09-13 17:00 → 2016-09-06 11:00 (-7d) |  |  | 1.25d → 0.6d |  | resources Ulises Rivera - GMAS [10%]; Arnoldo Martinelli - GMAS; Alexander Cruz - GMAS [10%] → Arnoldo Martinelli - GMAS; Alexander Cruz - GMAS [10%] |
| 31 | **Iteración 2** | 2016-09-14 08:00 → 2016-09-06 11:00 (-8d) | 2016-09-14 12:00 → 2016-09-06 16:00 (-8d) |  |  | 1.25d → 0.6d |  |  |
| 32 | Aplicación de Pruebas | 2016-09-14 08:00 → 2016-09-06 11:00 (-8d) | 2016-09-14 12:00 → 2016-09-06 16:00 (-8d) |  |  | 1.25d → 0.6d |  | resources Stephanie Barahona - GMAS → Arnoldo Martinelli - GMAS |
| 33 | **Pruebas de QA** | 2016-09-12 08:00 → 2016-08-31 11:00 (-12d) | 2016-09-21 15:00 → 2016-09-09 16:00 (-12d) | 6.75d → 7.5d |  | 0d → 0.6d | 23 → 23FS-2d |  |
| 34 | Generación de Scripts de Pruebas | 2016-09-12 08:00 → 2016-08-31 11:00 (-12d) | 2016-09-16 17:00 → 2016-09-06 11:00 (-10d) |  |  | 0d → 1.35d |  |  |
| 35 | **Iteración 1** | 2016-09-14 13:00 → 2016-09-06 16:00 (-8d) | 2016-09-20 17:00 → 2016-09-09 09:00 (-11d) | 3.5d → 2.25d |  | 0d → 0.6d |  |  |
| 36 | Generacion de Pase | 2016-09-14 13:00 → 2016-09-06 16:00 (-8d) | 2016-09-14 15:00 → 2016-09-07 09:00 (-7d) |  |  | 1.25d → 0.6d |  |  |
| 37 | Aplicación de Pruebas | 2016-09-19 08:00 → 2016-09-07 09:00 (-12d) | 2016-09-20 12:00 → 2016-09-08 14:00 (-12d) |  |  | 0d → 0.6d |  |  |
| 38 | Ajustes sobre PNS | 2016-09-20 13:00 → 2016-09-08 14:00 (-12d) | 2016-09-20 17:00 → 2016-09-09 09:00 (-11d) |  |  | 0d → 0.6d |  |  |
| 39 | **Iteración 2** | 2016-09-21 08:00 → 2016-09-09 09:00 (-12d) | 2016-09-21 15:00 → 2016-09-09 16:00 (-12d) |  |  | 0d → 0.6d |  |  |
| 40 | Generacion de Pase | 2016-09-21 08:00 → 2016-09-09 09:00 (-12d) | 2016-09-21 10:00 → 2016-09-09 11:00 (-12d) |  |  | 0d → 0.6d |  |  |
| 41 | Aplicación de Pruebas | 2016-09-21 10:00 → 2016-09-09 11:00 (-12d) | 2016-09-21 15:00 → 2016-09-09 16:00 (-12d) |  |  | 0d → 0.6d |  |  |
| 42 | **Pruebas de Usuario** | 2016-09-21 15:00 → 2016-09-09 16:00 (-12d) | 2016-09-26 12:00 → 2016-09-14 14:00 (-12d) |  |  | 0d → 0.6d |  |  |
| 43 | **Ejecución de Pruebas** | 2016-09-21 15:00 → 2016-09-09 16:00 (-12d) | 2016-09-26 12:00 → 2016-09-14 14:00 (-12d) |  |  | 0d → 0.6d |  |  |
| 44 | **Iteración 1** | 2016-09-21 15:00 → 2016-09-09 16:00 (-12d) | 2016-09-23 15:00 → 2016-09-13 16:00 (-10d) |  |  | 0d → 0.6d |  |  |
| 45 | Aplicación de Pruebas | 2016-09-21 15:00 → 2016-09-09 16:00 (-12d) | 2016-09-23 10:00 → 2016-09-13 11:00 (-10d) |  |  | 0d → 0.6d |  |  |
| 46 | Ajustes/Pruebas | 2016-09-23 10:00 → 2016-09-13 11:00 (-10d) | 2016-09-23 15:00 → 2016-09-13 16:00 (-10d) |  |  | 0d → 0.6d |  |  |
| 47 | **Iteración 2** | 2016-09-23 15:00 → 2016-09-13 16:00 (-10d) | 2016-09-26 12:00 → 2016-09-14 14:00 (-12d) |  |  | 0d → 0.6d |  |  |
| 48 | Pase a pruebas | 2016-09-23 15:00 → 2016-09-13 16:00 (-10d) | 2016-09-23 17:00 → 2016-09-14 09:00 (-9d) |  |  | 0d → 0.6d |  |  |
| 49 | Ejecución de pruebas y documentación | 2016-09-26 08:00 → 2016-09-14 09:00 (-12d) | 2016-09-26 12:00 → 2016-09-14 14:00 (-12d) |  |  | 0d → 0.6d |  |  |
| 50 | **Documentación** | 2016-09-26 13:00 → 2016-09-14 14:00 (-12d) | 2016-09-26 17:00 → 2016-09-16 09:00 (-10d) |  |  | 0d → 0.6d |  |  |
| 51 | Manual Técnico | 2016-09-26 13:00 → 2016-09-14 14:00 (-12d) | 2016-09-26 17:00 → 2016-09-16 09:00 (-10d) |  |  | 0d → 0.6d |  |  |
| 52 | **Cierre** | 2016-09-27 08:00 → 2016-09-16 09:00 (-11d) | 2016-09-27 11:12 → 2016-09-16 13:12 (-11d) |  |  | 0d → 0.6d |  |  |
| 53 | Preparación de Control Horas e Informe | 2016-09-27 08:00 → 2016-09-16 09:00 (-11d) | 2016-09-27 10:00 → 2016-09-16 11:00 (-11d) |  |  | 0d → 0.6d |  |  |
| 54 | Revisión de Documentos y Cierre | 2016-09-27 10:00 → 2016-09-16 11:00 (-11d) | 2016-09-27 11:12 → 2016-09-16 13:12 (-11d) |  |  | 0d → 0.6d |  |  |
